# PMIS_K18406C_Nhom5

Schedule from MS Project, 2021-02-23 to 2021-05-13, status date 2021-05-10, costs in $, A marks actual dates.

## Calendars

- Standard: Mon 08:00-12:00, 13:00-17:00; Tue-Sat 15:00-18:00, 20:30-22:30; Sun off. Exceptions (off unless hours are given): 2021-02-23 to 2021-05-15 (Giỗ tổ Hùng Vương, recurring), 2021-04-22 (Nghỉ sinh nhật), 2021-04-30 (Giải phóng miền Nam), 2021-05-03 (Nghỉ bù Quốc tế lao động).

## Resources

| Resource | Group | Rate |
| --- | --- | --- |
| Quỳnh Hương | member | 4 |
| Tuyết Nga | member | 4 |
| An Bình | member | 4 |
| Minh Thư | member | 4 |
| Commute cost |  |  |
| Laptop |  | 10 |
| Beverage cost |  |  |

## Schedule

| ID | WBS | Task | Type | Duration | Start | Finish | Predecessors | Complete | Actual start | Actual finish | Baseline start | Baseline finish | Baseline duration | Constraint | Resources | Work | Actual work | Cost | Baseline cost | Actual cost |
| --- | --- | --- | --- | --- | --- | --- | --- | --- | --- | --- | --- | --- | --- | --- | --- | --- | --- | --- | --- | --- |
| 1 | 1 | Discussion |  | 0.5d | 2021-02-23 A | 2021-02-24 A |  | 100% |  |  | 2021-02-23 | 2021-02-24 | 0.5d | finish no earlier than 2021-02-24 | An Bình; Minh Thư; Quỳnh Hương; Tuyết Nga; Laptop | 16h | 16h | 74 | 74 | 74 |
| 2 | 2 | **Surveying current status of AdventureWork Company** |  | 3.12d | 2021-02-25 A | 2021-03-01 A | 1 | 100% |  |  | 2021-02-25 | 2021-03-01 | 3.12d |  |  | 43.04h | 43.04h | 212.16 | 212.16 | 212.16 |
| 3 | 2.1 | Surveying background of AdventureWork company |  | 2.25d | 2021-02-25 A | 2021-03-01 A |  | 100% |  |  | 2021-02-25 | 2021-03-01 | 2.25d | finish no earlier than 2021-03-01 | An Bình; Minh Thư; Laptop [200%] | 36h | 36h | 164 | 164 | 164 |
| 4 | 2.2 | Surveying Human resource module of company |  | 0.88d | 2021-02-25 A | 2021-02-26 A | 3SS | 100% |  |  | 2021-02-25 | 2021-02-26 | 0.88d | start no earlier than 2021-02-25 | Quỳnh Hương; Tuyết Nga; Laptop [200%] | 7.04h | 7.04h | 48.16 | 48.16 | 48.16 |
| 5 | 3 | **Research about business strategy and business case of company** |  | 5.25d | 2021-03-02 A | 2021-03-10 | 2 | 100% |  | 2021-03-08 | 2021-03-02 | 2021-03-10 | 5.25d |  |  | 88h | 88h | 392 | 392 | 392 |
| 6 | 3.1 | Analysing SWOT |  | 3.5d | 2021-03-02 A | 2021-03-08 A |  | 100% |  |  | 2021-03-02 | 2021-03-08 | 3.5d | start no earlier than 2021-03-02 | An Bình; Laptop | 28h | 28h | 122 | 122 | 122 |
| 7 | 3.2 | Analysing Robson’s the five forces and IS opportunities |  | 3.5d | 2021-03-02 A | 2021-03-08 A | 6SS | 100% |  |  | 2021-03-02 | 2021-03-08 | 3.5d | finish no earlier than 2021-03-08 | Tuyết Nga; Laptop | 28h | 28h | 122 | 122 | 122 |
| 8 | 3.3 | Appraising investment (IRR, NPV, ROI) |  | 2d | 2021-03-02 A | 2021-03-05 A | 6SS | 100% |  |  | 2021-03-02 | 2021-03-05 | 2d |  | Quỳnh Hương; Minh Thư; Laptop [200%] | 32h | 32h | 148 | 148 | 148 |
| 9 | 4 | Discussion |  | 0.88d | 2021-03-09 A | 2021-03-10 A | 6, 7, 8 | 100% |  |  | 2021-03-09 | 2021-03-10 | 0.88d | start no earlier than 2021-03-09 | Laptop [200%]; Minh Thư; Quỳnh Hương; Tuyết Nga; An Bình | 28h | 28h | 132 | 132 | 132 |
| 10 | 5 | **Determining Business Intelligence strategy of company and requirements** |  | 4d | 2021-03-11 A | 2021-03-17 A | 5 | 100% |  |  | 2021-03-11 | 2021-03-17 | 4d |  |  | 96h | 96h | 414 | 414 | 414 |
| 11 | 5.1 | Determining Business Intelligence strategy |  | 3d | 2021-03-11 A | 2021-03-17 A |  | 100% |  |  | 2021-03-11 | 2021-03-17 | 3d |  | An Bình; Laptop; Quỳnh Hương | 48h | 48h | 202 | 202 | 202 |
| 12 | 5.2 | Determining requirements about HR module |  | 3d | 2021-03-11 A | 2021-03-17 A | 11SS | 100% |  |  | 2021-03-11 | 2021-03-17 | 3d | start no earlier than 2021-03-11 | Tuyết Nga; Minh Thư; Laptop [200%] | 48h | 48h | 212 | 212 | 212 |
| 13 | 6 | **Introduction to BI solutions** |  | 5.25d | 2021-03-18 A | 2021-03-26 A | 10 | 100% |  |  | 2021-03-18 | 2021-03-26 | 5.25d |  |  | 116h | 116h | 514 | 514 | 514 |
| 14 | 6.1 | Researching about PowerBI and Qlik |  | 2.88d | 2021-03-18 A | 2021-03-23 A |  | 100% |  |  | 2021-03-18 | 2021-03-23 | 2.88d | start no earlier than 2021-03-18 | Tuyết Nga; Laptop | 23h | 23h | 102 | 102 | 102 |
| 15 | 6.2 | Researching about Excel and SAP |  | 2.88d | 2021-03-18 A | 2021-03-23 A | 14SS | 100% |  |  | 2021-03-18 | 2021-03-23 | 2.88d | start no earlier than 2021-03-18 | Quỳnh Hương; Laptop | 23h | 23h | 102 | 102 | 102 |
| 16 | 6.3 | Researching about Oracle |  | 2.88d | 2021-03-18 A | 2021-03-23 A | 14SS | 100% |  |  | 2021-03-18 | 2021-03-23 | 2.88d | start no earlier than 2021-03-18 | An Bình; Laptop | 23h | 23h | 102 | 102 | 102 |
| 17 | 6.4 | Researching about SSAS and Tableau |  | 2.88d | 2021-03-18 A | 2021-03-23 A | 14SS | 100% |  |  | 2021-03-18 | 2021-03-23 | 2.88d | start no earlier than 2021-03-18 | Minh Thư; Laptop | 23h | 23h | 102 | 102 | 102 |
| 18 | 6.5 | Choosing the suitable solution with BI strategies of company |  | 1.5d | 2021-03-24 A | 2021-03-26 A | 14, 15, 16, 17 | 100% |  |  | 2021-03-24 | 2021-03-26 | 1.5d | finish no earlier than 2021-03-26 | Quỳnh Hương; Tuyết Nga; Laptop | 24h | 24h | 106 | 106 | 106 |
| 19 | 7 | **Designing Data warehouse** |  | 12.88d | 2021-03-30 | 2021-04-23 | 13 | 100% | 2021-04-02 | 2021-04-21 | 2021-03-30 | 2021-04-23 | 12.88d |  |  | 167h | 167h | 758 | 744 | 758 |
| 20 | 7.1 | Reseaching about DW model and choosing the suitable model |  | 2.19d | 2021-04-02 A | 2021-04-07 A |  | 100% |  |  | 2021-04-02 | 2021-04-07 | 2.19d | finish no earlier than 2021-04-07 | Minh Thư; Laptop [200%]; Quỳnh Hương | 35h | 35h | 160 | 160 | 160 |
| 21 | 7.2 | Discussion |  | 1d | 2021-04-08 A | 2021-04-09 A | 20 | 100% |  |  | 2021-04-08 | 2021-04-09 | 1d | start no earlier than 2021-04-08 | An Bình; Laptop [200%]; Minh Thư; Quỳnh Hương; Tuyết Nga | 32h | 32h | 148 | 138 | 148 |
| 22 | 7.3 | Designing multi-dimensional data model |  | 1.25d | 2021-04-12 A | 2021-04-13 A | 21 | 100% |  |  | 2021-04-12 | 2021-04-13 | 1.25d | finish no earlier than 2021-04-13 | Quỳnh Hương; An Bình; Laptop [200%] | 20h | 20h | 100 | 100 | 100 |
| 23 | 7.4 | ETL process and submit to teacher |  | 1d | 2021-04-14 A | 2021-04-15 A | 22 | 100% |  |  | 2021-04-14 | 2021-04-15 | 0.88d | start no earlier than 2021-04-14 | Tuyết Nga; Laptop | 8h | 8h | 42 | 38 | 42 |
| 24 | 7.5 | Discuss and change the assignment | manual | 3d | 2021-04-15 A | 2021-04-21 A | 23 | 100% |  |  | 2021-04-15 | 2021-04-21 | 3d |  | An Bình; Laptop [200%]; Quỳnh Hương; Tuyết Nga | 72h | 72h | 308 | 308 | 308 |

| ID | WBS | Task | Duration | Start | Finish | Predecessors | Complete | Actual finish | Baseline start | Baseline finish | Baseline duration | Constraint | Resources | Work | Actual work | Cost | Baseline cost | Actual cost |
| --- | --- | --- | --- | --- | --- | --- | --- | --- | --- | --- | --- | --- | --- | --- | --- | --- | --- | --- |
| 25 | 8 | **Analysising Data to meet the requirements** | 4.62d | 2021-04-23 A | 2021-05-03 | 19FS+1d | 100% | 2021-04-29 | 2021-04-23 | 2021-05-06 | 5.88d |  |  | 72h | 72h | 318 | 390 | 318 |
| 26 | 8.1 | About salary | 3d | 2021-04-23 A | 2021-04-29 A |  | 100% |  | 2021-04-23 | 2021-05-04 | 3.75d | start no earlier than 2021-04-23 | An Bình; Laptop | 24h | 24h | 106 | 130 | 106 |
| 27 | 8.2 | About department | 3d | 2021-04-23 A | 2021-04-29 A | 26SS | 100% |  | 2021-04-23 | 2021-05-04 | 3.75d | start no earlier than 2021-04-23 | Minh Thư; Laptop | 24h | 24h | 106 | 130 | 106 |
| 28 | 8.3 | About employees | 3d | 2021-04-23 A | 2021-04-29 A | 27SS | 100% |  | 2021-04-23 | 2021-05-04 | 3.75d | start no earlier than 2021-04-23 | Quỳnh Hương; Laptop | 24h | 24h | 106 | 130 | 106 |
| 29 | 9 | Discussion | 1d | 2021-05-04 A | 2021-05-06 A | 26, 27, 28 | 100% |  | 2021-05-04 | 2021-05-06 | 1.25d | finish no earlier than 2021-05-06 | An Bình; Beverage cost [0.1%]; Minh Thư; Commute cost [0.1%]; Laptop [300%] | 16h | 16h | 95.5 | 91.5 | 94 |
| 30 | 10 | Visualizing and creating dashboard | 0.25d | 2021-05-07 A | 2021-05-10 A | 29 | 100% |  | 2021-05-07 | 2021-05-10 | 1.62d | finish no earlier than 2021-05-10 | Tuyết Nga; Laptop | 2h | 2h | 18 | 52 | 18 |
| 31 | 11 | Discussion | 0.38d | 2021-05-11 A | 2021-05-11 A | 30 | 100% |  | 2021-05-11 | 2021-05-11 | 0.38d | finish no earlier than 2021-05-11 | An Bình; Beverage cost [0.1%]; Commute cost [0.1%]; Laptop [300%]; Minh Thư; Quỳnh Hương; Tuyết Nga | 12.16h | 12.16h | 94.64 | 73 | 94.64 |
| 32 | 12 | Evaluating the project and creating report | 0.88d | 2021-05-12 A | 2021-05-13 A | 31 | 100% |  | 2021-05-12 | 2021-05-13 | 0.88d | finish no earlier than 2021-05-13 | An Bình; Minh Thư; Quỳnh Hương; Tuyết Nga; Laptop [400%] | 28h | 28h | 152 | 152 | 152 |
